# 3成本规划-薛超凡

Schedule from MS Project, 2020-02-19 to 2020-07-24, scheduled back from the finish, costs in ¥.

## Calendars

- 标准: Mon-Fri 08:00-12:00, 13:00-17:00; Sat-Sun off.

## Resources

| Resource | Rate |
| --- | --- |
| 薛超凡 | 120 |
| 刘明瑛 | 85 |
| 冯聪 | 85 |
| 王胜莹 | 85 |
| 马云龙 | 85 |
| 程序员1 | 70 |
| 程序员2 | 70 |
| 程序员3 | 70 |
| 测试员1 | 70 |
| 测试员2 | 70 |
| 程序员4 | 70 |
| 方晓伟 | 85 |
| 电脑 | 3000 |
| 电脑 | 3000 |
| 电脑 | 3000 |
| 电脑 | 3000 |
| 电脑 | 3000 |
| 电脑 | 3000 |

## Schedule

| ID | WBS | Task | Duration | Start | Finish | Predecessors | Total slack | Constraint | Resources | Work | Cost |
| --- | --- | --- | --- | --- | --- | --- | --- | --- | --- | --- | --- |
| 1 | 1 | **启动** | 5d | 2020-02-19 | 2020-02-25 |  | 0d | as late as possible |  | 104h | 10,240 |
| 2 | 1.1 | 组建核心团队 | 1d | 2020-02-19 | 2020-02-19 |  | 0d |  | 刘明瑛; 王胜莹; 薛超凡; 冯聪; 马云龙 | 40h | 3,680 |
| 3 | 1.2 | 干系人分析 | 1d | 2020-02-20 | 2020-02-20 | 2 | 0d |  | 薛超凡 | 8h | 960 |
| 4 | 1.3 | 里程碑计划 | 1d | 2020-02-21 | 2020-02-21 | 3 | 0d |  | 薛超凡 | 8h | 960 |
| 5 | 1.4 | 制定项目章程 | 1d | 2020-02-24 | 2020-02-24 | 4 | 0d |  | 薛超凡 | 8h | 960 |
| 6 | 1.5 | 项目启动大会 | 1d | 2020-02-25 | 2020-02-25 | 5 | 0d |  | 刘明瑛; 王胜莹; 薛超凡; 冯聪; 马云龙 | 40h | 3,680 |
| 7 | 2 | **规划** | 35d? | 2020-02-26 | 2020-04-14 |  | 0d | as late as possible |  | 344h | 35,400 |
| 8 | 2.1 | **规划范围** | 18d? | 2020-02-26 | 2020-03-20 |  | 0d | as late as possible |  | 160h | 15,000 |
| 9 | 2.1.1 | **需求分析** | 6d | 2020-02-26 | 2020-03-04 |  | 0d | as late as possible |  | 48h | 4,080 |
| 10 | 2.1.1.1 | 收集需求 | 3d | 2020-02-26 | 2020-02-28 | 6 | 0d |  | 冯聪 | 24h | 2,040 |
| 11 | 2.1.1.2 | 编写需求文档 | 3d | 2020-03-02 | 2020-03-04 | 10 | 0d |  | 冯聪 | 24h | 2,040 |
| 12 | 2.1.2 | **设计** | 8d | 2020-03-05 | 2020-03-16 |  | 0d | as late as possible |  | 80h | 7,360 |
| 13 | 2.1.2.1 | UI设计 | 2d | 2020-03-05 | 2020-03-06 | 11 | 0d |  | 刘明瑛 | 16h | 1,360 |
| 14 | 2.1.2.2 | DB设计 | 2d | 2020-03-09 | 2020-03-10 | 13 | 0d |  | 王胜莹; 薛超凡 | 32h | 3,280 |
| 15 | 2.1.2.3 | 项目架构设计 | 2d | 2020-03-11 | 2020-03-12 | 14 | 0d |  | 王胜莹 | 16h | 1,360 |
| 16 | 2.1.2.4 | 编码规范的要求 | 2d | 2020-03-13 | 2020-03-16 | 15 | 0d |  | 马云龙 | 16h | 1,360 |
| 17 | 2.1.3 | 详细设计说明书 | 1d | 2020-03-17 | 2020-03-17 | 16 | 0d |  | 王胜莹 | 8h | 680 |
| 18 | 2.1.4 | 范围说明书 | 1d | 2020-03-18 | 2020-03-18 | 17 | 0d |  | 薛超凡 | 8h | 960 |
| 19 | 2.1.5 | 创建WBS | 1d? | 2020-03-19 | 2020-03-19 | 18 | 0d |  | 薛超凡 | 8h | 960 |
| 20 | 2.1.6 | 行程范围基准 | 1d? | 2020-03-20 | 2020-03-20 | 19 | 0d |  | 薛超凡 | 8h | 960 |
| 21 | 2.2 | **规划时间** | 5d | 2020-03-23 | 2020-03-27 |  | 0d | as late as possible |  | 40h | 4,800 |
| 22 | 2.2.1 | 工作包排序 | 1d | 2020-03-23 | 2020-03-23 | 20 | 0d |  | 薛超凡 | 8h | 960 |
| 23 | 2.2.2 | 估算资源 | 1d | 2020-03-24 | 2020-03-24 | 22 | 0d |  | 薛超凡 | 8h | 960 |
| 24 | 2.2.3 | 估算持续时间 | 1d | 2020-03-25 | 2020-03-25 | 23 | 0d |  | 薛超凡 | 8h | 960 |
| 25 | 2.2.4 | 制定进度计划 | 2d | 2020-03-26 | 2020-03-27 | 24 | 0d |  | 薛超凡 | 16h | 1,920 |

| ID | WBS | Task | Duration | Start | Finish | Predecessors | Total slack | Free slack | Constraint | Resources | Work | Cost |
| --- | --- | --- | --- | --- | --- | --- | --- | --- | --- | --- | --- | --- |
| 26 | 2.3 | **规划成本** | 2d | 2020-03-30 | 2020-03-31 |  | 0d |  | as late as possible |  | 16h | 1,920 |
| 27 | 2.3.1 | 项目成本估算 | 1d | 2020-03-30 | 2020-03-30 | 25 | 0d |  |  | 薛超凡 | 8h | 960 |
| 28 | 2.3.2 | 项目预算 | 1d | 2020-03-31 | 2020-03-31 | 27 | 0d |  |  | 薛超凡 | 8h | 960 |
| 29 | 2.4 | **规划质量** | 2d | 2020-03-30 | 2020-03-31 |  | 0d |  | as late as possible |  | 16h | 1,360 |
| 30 | 2.4.1 | 制定测试计划 | 1d | 2020-03-30 | 2020-03-30 | 25 | 10d | 0d |  | 马云龙 | 8h | 680 |
| 31 | 2.4.2 | 制定测试用例 | 1d | 2020-03-31 | 2020-03-31 | 30 | 10d |  |  | 马云龙 | 8h | 680 |
| 32 | 2.5 | **规划人力资源** | 2d | 2020-04-01 | 2020-04-02 |  | 0d |  | as late as possible |  | 16h | 1,920 |
| 33 | 2.5.1 | 制定人力资源计划 | 1d | 2020-04-01 | 2020-04-01 | 28 | 0d |  |  | 薛超凡 | 8h | 960 |
| 34 | 2.5.2 | 制定人员配备管理计划 | 1d | 2020-04-02 | 2020-04-02 | 33 | 0d |  |  | 薛超凡 | 8h | 960 |
| 35 | 2.6 | **规划沟通** | 2d | 2020-04-03 | 2020-04-06 |  | 0d |  | as late as possible |  | 16h | 1,920 |
| 36 | 2.6.1 | 制定沟通管理计划 | 2d | 2020-04-03 | 2020-04-06 | 34 | 0d |  |  | 薛超凡 | 16h | 1,920 |
| 37 | 2.7 | **规划采购** | 2d | 2020-04-07 | 2020-04-08 |  | 0d |  | as late as possible |  | 16h | 1,920 |
| 38 | 2.7.1 | 自制外购分析 | 1d | 2020-04-07 | 2020-04-07 | 36 | 0d |  |  | 薛超凡 | 8h | 960 |
| 39 | 2.7.2 | 制定采购文件 | 1d | 2020-04-08 | 2020-04-08 | 38 | 0d |  |  | 薛超凡 | 8h | 960 |
| 40 | 2.8 | **规划风险** | 3d | 2020-04-09 | 2020-04-13 |  | 0d |  | as late as possible |  | 56h | 5,600 |
| 41 | 2.8.1 | 识别风险 | 1d | 2020-04-09 | 2020-04-09 | 39 | 0d |  |  | 薛超凡; 马云龙 | 16h | 1,640 |
| 42 | 2.8.2 | 风险分析 | 1d | 2020-04-10 | 2020-04-10 | 41 | 0d |  |  | 王胜莹; 薛超凡 | 16h | 1,640 |
| 43 | 2.8.3 | 制定风险登记册 | 1d | 2020-04-13 | 2020-04-13 | 42 | 0d |  |  | 王胜莹; 薛超凡; 马云龙 | 24h | 2,320 |
| 44 | 2.9 | 规划整合 | 1d | 2020-04-14 | 2020-04-14 | 43 | 0d |  |  | 薛超凡 | 8h | 960 |
| 45 | 3 | **执行与监控** | 78d? | 2020-04-08 | 2020-07-24 |  | 0d |  | as late as possible |  | 1920h | 151,960 |
| 46 | 3.1 | 组建项目团队 | 1d | 2020-04-15 | 2020-04-15 | 7 | 0d |  |  | 刘明瑛; 测试员1; 测试员2; 程序员1; 程序员2; 程序员3; 王胜莹; 薛超凡; 冯聪; 马云龙 | 80h | 6,480 |
| 47 | 3.2 | **执行阶段** | 63d? | 2020-04-08 | 2020-07-03 |  | 0d |  | as late as possible |  | 1136h | 80,400 |
| 48 | 3.2.1 | **用户模块** | 18d | 2020-04-16 | 2020-05-11 |  | 0d |  | as late as possible |  | 168h | 11,760 |
| 49 | 3.2.1.1 | **注册登陆** | 4d | 2020-04-16 | 2020-04-21 |  | 0d |  | as late as possible |  | 32h | 2,240 |
| 50 | 3.2.1.1.1 | 邮箱注册 | 2d | 2020-04-16 | 2020-04-17 | 46 | 0d |  |  | 程序员1 | 16h | 1,120 |
| 51 | 3.2.1.1.2 | 手机号注册 | 2d | 2020-04-20 | 2020-04-21 | 50 | 0d |  |  | 程序员1 | 16h | 1,120 |

| ID | WBS | Task | Type | Duration | Start | Finish | Predecessors | Total slack | Free slack | Constraint | Resources | Work | Cost |
| --- | --- | --- | --- | --- | --- | --- | --- | --- | --- | --- | --- | --- | --- |
| 52 | 3.2.1.1.3 | **第三方登陆** |  | 0d | 2020-04-21 | 2020-04-21 |  | 0d |  | as late as possible |  |  |  |
| 53 | 3.2.1.1.3.1 | QQ登陆 | milestone | 0d | 2020-04-21 | 2020-04-21 | 51 | 0d |  |  | 程序员1 |  |  |
| 54 | 3.2.1.1.3.2 | 微信登陆 | milestone | 0d | 2020-04-21 | 2020-04-21 | 53 | 0d |  |  | 程序员1 |  |  |
| 55 | 3.2.1.1.3.3 | 微博登陆 | milestone | 0d | 2020-04-21 | 2020-04-21 | 54 | 0d |  |  | 程序员1 |  |  |
| 56 | 3.2.1.2 | 修改信息 |  | 1d | 2020-04-22 | 2020-04-22 | 55 | 0d |  |  | 程序员1 | 8h | 560 |
| 57 | 3.2.1.3 | 修改密码 |  | 1d | 2020-04-23 | 2020-04-23 | 56 | 0d |  |  | 程序员1 | 8h | 560 |
| 58 | 3.2.1.4 | 搜索目的地 |  | 2d | 2020-04-24 | 2020-04-27 | 57 | 0d |  |  | 程序员1 | 16h | 1,120 |
| 59 | 3.2.1.5 | 下单 |  | 2d | 2020-04-28 | 2020-04-29 | 58 | 0d |  |  | 测试员1; 程序员1 | 32h | 2,240 |
| 60 | 3.2.1.6 | 退款 |  | 2d | 2020-04-30 | 2020-05-01 | 59 | 0d |  |  | 程序员1 | 16h | 1,120 |
| 61 | 3.2.1.7 | 购物车 |  | 2d | 2020-05-04 | 2020-05-05 | 60 | 0d |  |  | 程序员1 | 16h | 1,120 |
| 62 | 3.2.1.8 | 收藏 |  | 1d | 2020-05-06 | 2020-05-06 | 61 | 0d |  |  | 测试员1; 程序员1 | 16h | 1,120 |
| 63 | 3.2.1.9 | 评论 |  | 2d | 2020-05-07 | 2020-05-08 | 62 | 0d |  |  | 程序员1 | 16h | 1,120 |
| 64 | 3.2.1.10 | 分享 |  | 1d | 2020-05-11 | 2020-05-11 | 63 | 0d |  |  | 程序员1 | 8h | 560 |
| 65 | 3.2.2 | **商家模块** |  | 16d | 2020-04-16 | 2020-05-07 |  | 0d |  | as late as possible |  | 128h | 8,960 |
| 66 | 3.2.2.1 | 注册登陆 |  | 3d | 2020-04-16 | 2020-04-20 | 46 | 2d | 0d |  | 程序员2 | 24h | 1,680 |
| 67 | 3.2.2.2 | 商品管理 |  | 3d | 2020-04-21 | 2020-04-23 | 66 | 2d | 0d |  | 程序员2 | 24h | 1,680 |
| 68 | 3.2.2.3 | 订单处理 |  | 3d | 2020-04-24 | 2020-04-28 | 67 | 2d | 0d |  | 程序员2 | 24h | 1,680 |
| 69 | 3.2.2.4 | 统计 |  | 1d | 2020-04-29 | 2020-04-29 | 68 | 2d | 0d |  | 程序员2 | 8h | 560 |
| 70 | 3.2.2.5 | 商家配置 |  | 6d | 2020-04-30 | 2020-05-07 | 69 | 2d | 0d |  | 程序员2 | 48h | 3,360 |
| 71 | 3.2.3 | 中期评审 |  | 1d | 2020-05-12 | 2020-05-12 | 64, 70 | 0d |  | start no later than 2020-05-12 | 刘明瑛; 测试员1; 测试员2; 程序员1; 程序员2; 程序员3; 王胜莹; 薛超凡; 冯聪; 马云龙 | 80h | 6,480 |
| 72 | 3.2.4 | **社区模块** |  | 22d? | 2020-04-08 | 2020-05-07 |  | 0d |  | as late as possible |  | 128h | 8,960 |
| 73 | 3.2.4.1 | 社区模块 | milestone | 0d? | 2020-04-08 | 2020-04-08 |  | 0d |  | must start on 2020-04-08 |  |  |  |
| 74 | 3.2.4.2 | 社区模块 | milestone | 0d? | 2020-05-07 | 2020-05-07 |  | 0d |  | must finish on 2020-05-07 |  |  |  |
| 75 | 3.2.4.3 | 新建帖子 |  | 4d | 2020-04-16 | 2020-04-21 | 46 | 33d | 0d |  | 程序员3 | 32h | 2,240 |
| 76 | 3.2.4.4 | 修改帖子 |  | 2d | 2020-04-22 | 2020-04-23 | 75 | 33d | 0d |  | 程序员3 | 16h | 1,120 |
| 77 | 3.2.4.5 | 检索帖子 |  | 2d | 2020-04-24 | 2020-04-27 | 76 | 33d | 0d |  | 程序员3 | 16h | 1,120 |
| 78 | 3.2.4.6 | 删除帖子 |  | 1d? | 2020-04-28 | 2020-04-28 | 77 | 33d | 0d |  | 程序员3 | 8h | 560 |
| 79 | 3.2.4.7 | 收藏 |  | 3d | 2020-04-29 | 2020-05-01 | 78 | 33d | 0d |  | 程序员3 | 24h | 1,680 |
| 80 | 3.2.4.8 | 评论 |  | 2d | 2020-05-04 | 2020-05-05 | 79 | 33d | 0d |  | 程序员3 | 16h | 1,120 |
| 81 | 3.2.4.9 | 分享 |  | 2d | 2020-05-06 | 2020-05-07 | 80 | 33d | 0d |  | 程序员3 | 16h | 1,120 |

| ID | WBS | Task | Type | Duration | Start | Finish | Predecessors | Total slack | Free slack | Constraint | Resources | Work | Cost |
| --- | --- | --- | --- | --- | --- | --- | --- | --- | --- | --- | --- | --- | --- |
| 82 | 3.2.5 | **景点模块** |  | 25d? | 2020-05-08 | 2020-06-11 |  | 0d |  | as late as possible |  | 176h | 12,320 |
| 83 | 3.2.5.1 | 景点模块 | milestone | 0d? | 2020-05-13 | 2020-05-13 |  | 0d |  | must start on 2020-05-13 |  |  |  |
| 84 | 3.2.5.2 | 景点模块 | milestone | 0d? | 2020-06-11 | 2020-06-11 |  | 0d |  | must finish on 2020-06-11 |  |  |  |
| 85 | 3.2.5.3 | 新增 |  | 4d | 2020-05-08 | 2020-05-13 | 70 | 30d | 0d |  | 程序员2 | 32h | 2,240 |
| 86 | 3.2.5.4 | 修改 |  | 4d | 2020-05-14 | 2020-05-19 | 85 | 30d | 0d |  | 程序员2 | 32h | 2,240 |
| 87 | 3.2.5.5 | 检索帖子 |  | 3d | 2020-05-20 | 2020-05-22 | 86 | 30d | 0d |  | 程序员2 | 24h | 1,680 |
| 88 | 3.2.5.6 | 删除帖子 |  | 3d | 2020-05-25 | 2020-05-27 | 87 | 30d | 0d |  | 程序员2 | 24h | 1,680 |
| 89 | 3.2.5.7 | 收藏 |  | 3d | 2020-05-28 | 2020-06-01 | 88 | 30d | 0d |  | 程序员2 | 24h | 1,680 |
| 90 | 3.2.5.8 | 评论 |  | 3d | 2020-06-02 | 2020-06-04 | 89 | 30d | 0d |  | 程序员2 | 24h | 1,680 |
| 91 | 3.2.5.9 | 分享 |  | 2d | 2020-06-05 | 2020-06-08 | 90 | 30d |  |  | 程序员2 | 16h | 1,120 |
| 92 | 3.2.6 | **导航模块** |  | 39d? | 2020-05-12 | 2020-07-03 |  | 0d |  | as late as possible |  | 304h | 21,280 |
| 93 | 3.2.6.1 | 导航模块 | milestone | 0d? | 2020-05-13 | 2020-05-13 |  | 0d |  | must start on 2020-05-13 |  |  |  |
| 94 | 3.2.6.2 | 导航模块 | milestone | 0d? | 2020-07-03 | 2020-07-03 |  | 0d |  | must finish on 2020-07-03 |  |  |  |
| 95 | 3.2.6.3 | 调用百度地图API |  | 2d | 2020-05-12 | 2020-05-13 | 64 | 1d | 0d |  | 程序员1 | 16h | 1,120 |
| 96 | 3.2.6.4 | 根据输入信息的推荐系统 |  | 7d | 2020-05-14 | 2020-05-22 | 95 | 1d | 0d |  | 程序员1 | 56h | 3,920 |
| 97 | 3.2.6.5 | 推荐目的地库 |  | 10d | 2020-05-25 | 2020-06-05 | 96 | 1d | 0d |  | 程序员1 | 80h | 5,600 |
| 98 | 3.2.6.6 | 收藏路线 |  | 5d | 2020-06-08 | 2020-06-12 | 97 | 1d | 0d |  | 程序员1 | 40h | 2,800 |
| 99 | 3.2.6.7 | 分享路线 |  | 2d | 2020-06-15 | 2020-06-16 | 98 | 1d | 0d |  | 程序员1 | 16h | 1,120 |
| 100 | 3.2.6.8 | 评论路线 |  | 2d | 2020-06-17 | 2020-06-18 | 99 | 1d | 0d |  | 程序员1 | 16h | 1,120 |
| 101 | 3.2.6.9 | 导航 |  | 10d | 2020-06-22 | 2020-07-03 | 100 | 1d | 0d | finish no later than 2020-07-03 | 程序员1 | 80h | 5,600 |
| 102 | 3.2.7 | **管理员模块** |  | 19d | 2020-05-08 | 2020-06-03 |  | 0d |  | as late as possible |  | 152h | 10,640 |
| 103 | 3.2.7.1 | 商家审核 |  | 7d | 2020-05-08 | 2020-05-18 | 81 | 33d | 0d |  | 程序员4 | 56h | 3,920 |
| 104 | 3.2.7.2 | 促销活动 |  | 5d | 2020-05-19 | 2020-05-25 | 103 | 33d | 0d |  | 程序员4 | 40h | 2,800 |
| 105 | 3.2.7.3 | 统计分析 |  | 3d | 2020-05-26 | 2020-05-28 | 104 | 33d | 0d |  | 程序员4 | 24h | 1,680 |
| 106 | 3.2.7.4 | 备份 |  | 4d | 2020-05-29 | 2020-06-03 | 105 | 33d |  |  | 程序员4 | 32h | 2,240 |

| ID | WBS | Task | Type | Duration | Start | Finish | Predecessors | Total slack | Free slack | Constraint | Resources | Work | Cost |
| --- | --- | --- | --- | --- | --- | --- | --- | --- | --- | --- | --- | --- | --- |
| 107 | 3.3 | **项目监控** |  | 62d? | 2020-04-16 | 2020-07-10 |  | 0d |  | as late as possible |  | 152h | 13,560 |
| 108 | 3.3.1 | 项目监控 | milestone | 0d? | 2020-07-07 | 2020-07-07 |  | 0d |  | must start on 2020-07-07 |  |  |  |
| 109 | 3.3.2 | 项目监控 | milestone | 0d? | 2020-07-10 | 2020-07-10 |  | 0d |  | must finish on 2020-07-10 |  |  |  |
| 110 | 3.3.3 | 各项指标监控 |  | 1d? | 2020-04-16 | 2020-04-16 | 46 | 58d | 0d |  | 测试员1; 测试员2; 薛超凡; 刘明瑛 | 32h | 2,760 |
| 111 | 3.3.4 | 监控评审 |  | 1d? | 2020-04-17 | 2020-04-17 | 110 | 58d | 0d |  | 刘明瑛; 薛超凡; 马云龙 | 24h | 2,320 |
| 112 | 3.3.5 | 变更评审 |  | 1d? | 2020-04-20 | 2020-04-20 | 111 | 58d | 0d |  | 刘明瑛; 王胜莹; 薛超凡; 冯聪; 马云龙 | 40h | 3,680 |
| 113 | 3.3.6 | 例会 |  | 1d | 2020-07-10 | 2020-07-10 | 112 | 58d | 0d | start no later than 2020-07-10 | 刘明瑛; 测试员1; 测试员2; 程序员1; 程序员2; 程序员3; 王胜莹; 薛超凡; 冯聪; 马云龙 | 56h | 4,800 |
| 114 | 3.4 | **管理干系人** |  | 65d? | 2020-04-16 | 2020-07-15 |  | 0d |  | as late as possible |  | 24h | 2,880 |
| 115 | 3.4.1 | 管理干系人 | milestone | 0d? | 2020-07-13 | 2020-07-13 |  | 0d |  | must start on 2020-07-13 |  |  |  |
| 116 | 3.4.2 | 管理干系人 | milestone | 0d? | 2020-07-15 | 2020-07-15 |  | 0d |  | must finish on 2020-07-15 |  |  |  |
| 117 | 3.4.3 | 发布项目信息 |  | 1d? | 2020-04-16 | 2020-04-16 | 46 | 71d |  |  | 薛超凡 | 8h | 960 |
| 118 | 3.4.4 | 报告监控指标 |  | 1d? | 2020-07-14 | 2020-07-14 | 46 | 63d | 0d | start no later than 2020-07-14 | 薛超凡 | 8h | 960 |
| 119 | 3.4.5 | 干系人沟通 |  | 1d? | 2020-07-15 | 2020-07-15 | 46 | 64d | 0d | start no later than 2020-07-15 | 薛超凡 | 8h | 960 |
| 120 | 3.5 | **团队建设** |  | 3d? | 2020-07-16 | 2020-07-20 |  | 65d | 0d | as late as possible |  | 240h | 19,440 |
| 121 | 3.5.1 | 培训 |  | 1d? | 2020-07-16 | 2020-07-16 | 46 | 65d | 0d | start no later than 2020-07-16 | 刘明瑛; 测试员1; 测试员2; 程序员1; 程序员2; 程序员3; 王胜莹; 薛超凡; 冯聪; 马云龙 | 80h | 6,480 |
| 122 | 3.5.2 | 娱乐活动 |  | 1d? | 2020-07-17 | 2020-07-17 | 46 | 66d | 0d | start no later than 2020-07-17 | 刘明瑛; 测试员1; 测试员2; 程序员1; 程序员2; 程序员3; 王胜莹; 薛超凡; 冯聪; 马云龙 | 80h | 6,480 |
| 123 | 3.5.3 | 沟通 |  | 1d? | 2020-07-20 | 2020-07-20 | 46 | 67d | 0d | start no later than 2020-07-20 | 刘明瑛; 测试员1; 测试员2; 程序员1; 程序员2; 程序员3; 王胜莹; 薛超凡; 冯聪; 马云龙 | 80h | 6,480 |
| 124 | 3.6 | 采购 |  | 15d | 2020-04-16 | 2020-05-06 | 46 | 57d |  |  | 薛超凡 | 120h | 14,400 |
| 125 | 3.7 | 项目验收 |  | 1d | 2020-07-21 | 2020-07-21 | 47 | 11d | 0d | start no later than 2020-07-21 | 刘明瑛; 测试员1; 测试员2; 程序员1; 程序员2; 程序员3; 王胜莹; 薛超凡; 冯聪; 马云龙 | 80h | 6,480 |
| 126 | 3.8 | **收尾** |  | 3d? | 2020-07-22 | 2020-07-24 |  | 11d | 0d | as late as possible |  | 88h | 8,320 |
| 127 | 3.8.1 | 项目终验 |  | 1d? | 2020-07-22 | 2020-07-22 | 125 | 11d | 0d | start no later than 2020-07-22 | 刘明瑛; 王胜莹; 薛超凡; 冯聪; 马云龙 | 40h | 3,680 |
| 128 | 3.8.2 | 结束采购 |  | 1d | 2020-07-23 | 2020-07-23 | 125 | 12d | 0d | start no later than 2020-07-23 | 薛超凡 | 8h | 960 |
| 129 | 3.8.3 | 项目内部收尾 |  | 1d | 2020-07-24 | 2020-07-24 | 125 | 13d | 0d | finish no later than 2020-07-25 | 刘明瑛; 王胜莹; 薛超凡; 冯聪; 马云龙 | 40h | 3,680 |
